How a schedule from an exported table changed from version to version. A marks actual dates.

## Version 1 (saved 2026-07-01)

Note of the change: feat: multi-page Chemsol docs site + rename to chemsol/ for clean URLs

| Task | Start | Finish |
| --- | --- | --- |
| Chemsol Zoho Creator Implementation |  |  |
| Phase 1: Master Data Setup |  |  |
| Purchase Item Muster | 2026-07-06 | 2026-07-07 |
| System Master | 2026-07-07 | 2026-07-07 |
| BOM Master | 2026-07-08 | 2026-07-09 |
| Supplier Master | 2026-07-09 | 2026-07-10 |
| Customer / Site Master | 2026-07-10 | 2026-07-10 |
| Store Master & Bin Location | 2026-07-13 | 2026-07-13 |
| User Access Setup | 2026-07-14 | 2026-07-14 |
| Approval Matrix | 2026-07-14 | 2026-07-15 |
| Configure Item AutoFetch Rules | 2026-07-15 | 2026-07-15 |
| Phase 2: Project Hub + Sales Module |  |  |
| Create Project Form (Hub) | 2026-07-20 | 2026-07-21 |
| Task Category: Transportation | 2026-07-21 | 2026-07-22 |
| Task Category: Application/Execution | 2026-07-22 | 2026-07-22 |
| Task Category: Manpower | 2026-07-22 | 2026-07-22 |
| Task Category: Tools & Expenses | 2026-07-22 | 2026-07-22 |
| Sales/Work Order - Supply+Apply Mode | 2026-07-23 | 2026-07-24 |
| Sales/Work Order - Supply Only Mode | 2026-07-24 | 2026-07-24 |
| SO -> Project Auto-Creation Workflow | 2026-07-24 | 2026-07-24 |
| Phase 3: Procurement (Tagged to Project) |  |  |
| Purchase Requisition (PR) - Project Tagged | 2026-07-27 | 2026-07-28 |
| Rate Comparison - Project Tagged | 2026-07-28 | 2026-07-29 |
| Purchase Order (PO) - Project Tagged | 2026-07-29 | 2026-07-30 |
| PO Dual Numbering Logic | 2026-07-30 | 2026-07-30 |
| Goods Receipt Note (GRN) - Project Tagged | 2026-08-02 | 2026-08-03 |
| QC / QA Form | 2026-08-03 | 2026-08-03 |
| Phase 4: Inventory (Tagged to Project) |  |  |
| Material Requisition (MR) - Project Tagged | 2026-08-09 | 2026-08-10 |
| Material Issue Slip (MIS) - Project Tagged | 2026-08-10 | 2026-08-11 |
| FG Handover (FGHM) - Project Tagged | 2026-08-11 | 2026-08-12 |
| FG Acceptance (FGAN) - Project Tagged | 2026-08-12 | 2026-08-12 |
| Material Return / Handover / Vehicle Forms | 2026-08-13 | 2026-08-13 |
| Phase 5: Production (Tagged to Project) |  |  |
| Production Planning - Project Tagged | 2026-08-17 | 2026-08-17 |
| Production Order & BMR - Project Tagged | 2026-08-17 | 2026-08-18 |
| RM Consumption / Packing / Rework Forms | 2026-08-18 | 2026-08-18 |
| Phase 6: Dashboards & Reports |  |  |
| Purchase Dept Dashboard | 2026-08-24 | 2026-08-25 |
| Store Dept Dashboard | 2026-08-25 | 2026-08-26 |
| Production Dept Dashboard | 2026-08-26 | 2026-08-27 |
| Project Dashboard | 2026-08-27 | 2026-08-27 |
| Phase 7: UAT & Go-Live |  |  |
| Configure All Autofetch & Lookup Rules | 2026-08-31 | 2026-08-31 |
| Configure Notifications & Stock Rules | 2026-08-31 | 2026-09-01 |
| Test End-to-End: Project -> Procurement | 2026-09-01 | 2026-09-02 |
| Test End-to-End: Project -> Inventory | 2026-09-02 | 2026-09-02 |
| Test End-to-End: Project -> Production | 2026-09-02 | 2026-09-02 |
| Test All Conditional Visibility Rules | 2026-09-03 | 2026-09-03 |
| Test PO Numbering & Printable Format | 2026-09-03 | 2026-09-03 |
| Test Department Permissions | 2026-09-06 | 2026-09-06 |
| User Acceptance Testing (UAT) | 2026-09-06 | 2026-09-08 |
| Training & Documentation | 2026-09-08 | 2026-09-09 |
| Go-Live Deployment | 2026-09-09 | 2026-09-09 |

## Version 2 (saved 2026-07-01)

Note of the change: simplify: remove dual-mode SO and 5 nested task categories

Last finish stays 2026-09-09.

Removed: Sales/Work Order - Supply Only Mode

Changed:

| Task | Start |
| --- | --- |
| Sales/Work Order - Supply+Apply Mode | 2026-07-23 → 2026-07-24 (+1d) |

## Version 3 (saved 2026-07-21)

Note of the change: Deploy from main: 2026-07-21-09:50:42

Last finish stays 2026-09-09.

Added:

| Task | Start | Finish |
| --- | --- | --- |
| Phase 3: Procurement (Stream A - No Project ID) |  |  |
| Purchase Requisition (PR) | 2026-07-27 | 2026-07-28 |
| Rate Comparison | 2026-07-28 | 2026-07-29 |
| Purchase Order (PO) | 2026-07-29 | 2026-07-30 |
| Goods Receipt Note (GRN) | 2026-08-02 | 2026-08-03 |
| FGHM Inline Acceptance | 2026-08-12 | 2026-08-12 |
| Test End-to-End: Procurement (Stream A) | 2026-09-01 | 2026-09-02 |

Removed: Phase 3: Procurement (Tagged to Project); Purchase Requisition (PR) - Project Tagged; Rate Comparison - Project Tagged; Purchase Order (PO) - Project Tagged; Goods Receipt Note (GRN) - Project Tagged; FG Acceptance (FGAN) - Project Tagged; Test End-to-End: Project -> Procurement

## Version 4 (saved 2026-08-03)

Note of the change: C32/C33: fix 8 deluge bugs + new costingSlaEscalate.deluge, sweep residual doc residue, sim 72/72

Last finish stays 2026-09-09.

Added:

| Task | Start | Finish |
| --- | --- | --- |
| SO -> Costing Sheet Auto-Creation Workflow | 2026-07-24 | 2026-07-24 |

Removed: SO -> Project Auto-Creation Workflow
